# Group9_AfterLeveling

Schedule from MS Project, 2024-01-22 to 2024-10-16, costs in TMN.

## Calendars

- Standard: Mon-Fri 08:00-12:00, 13:00-17:00; Sat-Sun off.
- Weekend with work: Mon-Sun 08:00-12:00, 13:00-17:00.

## Resources

| Resource | Group | Rate | Cost per use |
| --- | --- | --- | --- |
| کارگر خط تولید | منابع انسانی | 180000 | 65000 |
| نیروی انسانی تامین مواد اولیه |  | 190000 | 65000 |
| تیم کنترل کیفیت |  | 300000 | 65000 |
| تیم متخصصین داروسازی |  | 350000 | 65000 |
| مدیران و سیاست گذاران |  | 500000 | 65000 |
| تیم نگهداری و تعمیرات |  | 250000 | 65000 |
| تیم مهندسی صنایع |  | 300000 | 65000 |
| کارمند بخش حقوقی |  | 300000 | 65000 |
| متخصص آماری |  | 500000 | 65000 |
| مواد اولیه |  | 100000000 | 65000 |
| تجهیزات خط تولید |  | 50000000 | 65000 |
| سیستم کامپیوتری |  |  | 65000 |
| منبع مالی |  |  |  |

## Schedule

| ID | WBS | Task | Type | Duration | Start | Finish | Predecessors | Baseline start | Baseline finish | Baseline duration | Total slack | Free slack | Calendar | Resources | Work | Cost | Baseline cost |
| --- | --- | --- | --- | --- | --- | --- | --- | --- | --- | --- | --- | --- | --- | --- | --- | --- | --- |
| 1 | 1 | START | milestone | 0d | 2024-01-22 | 2024-01-22 |  | 2024-01-22 | 2024-01-22 | 0d | 0d |  |  |  |  |  |  |
| 2 | 2 | **شناسایی مشکلات و نواقص خط تولید** |  | 61d | 2024-01-22 | 2024-04-15 |  | 2024-01-22 | 2024-04-15 | 61d | 0d |  |  |  | 4024h | 1,617,085,000 | 1,617,085,000 |
| 3 | 2.1 | بررسی خط تولید |  | 30d | 2024-01-22 | 2024-03-01 | 1 | 2024-01-22 | 2024-03-01 | 30d | 0d |  | Weekend with work | تیم مهندسی صنایع [500%] | 1600h | 484,325,000 | 484,325,000 |
| 4 | 2.2 | کیفیت سنجی خط تولید |  | 20d | 2024-03-04 | 2024-03-29 | 3 | 2024-03-04 | 2024-03-29 | 20d | 27.2d | 0d |  | تیم کنترل کیفیت [1000%] | 1600h | 480,650,000 | 480,650,000 |
| 5 | 2.3 | ارایه گزارشات شناسایی مشکلات و نواقص خط تولید |  | 1d | 2024-04-01 | 2024-04-01 | 4 | 2024-04-01 | 2024-04-01 | 1d | 27.2d | 0d |  | تیم مهندسی صنایع [300%] | 24h | 7,395,000 | 7,395,000 |
| 6 | 2.4 | رفع مشکلات خط تولید |  | 10d | 2024-04-02 | 2024-04-15 | 5 | 2024-04-02 | 2024-04-15 | 10d | 27.2d |  |  | کارگر خط تولید [1000%]; مواد اولیه [500%] | 800h | 644,715,000 | 644,715,000 |
| 7 | 3 | **تعمیر و نگهداری** |  | 145d | 2024-03-04 | 2024-09-20 |  | 2024-03-04 | 2024-09-20 | 145d | 0d |  |  |  | 13128h | 125,046,320,000 | 125,046,320,000 |
| 8 | 3.1 | تعمیر و نگهداری تجهیزات خط تولید |  | 40d | 2024-03-04 | 2024-04-26 | 3 | 2024-03-04 | 2024-04-26 | 40d | 0d |  |  | تیم نگهداری و تعمیرات [500%] | 1600h | 400,325,000 | 400,325,000 |
| 9 | 3.2 | تعیین زمان های معین برای بررسی تجهیزات |  | 1.2d | 2024-04-29 | 2024-04-30 | 8 | 2024-04-29 | 2024-04-30 | 1.2d | 0d |  |  | تیم نگهداری و تعمیرات [500%] | 48h | 12,325,000 | 12,325,000 |
| 10 | 3.3 | برنامه ریزی برای کیفیت سنجی تجهیزات و ابزار آلات |  | 2d | 2024-04-30 | 2024-05-02 | 9 | 2024-04-30 | 2024-05-02 | 2d | 0d |  |  | تیم نگهداری و تعمیرات [500%] | 80h | 20,325,000 | 20,325,000 |
| 11 | 3.4 | بررسی نواقص تجهیزات |  | 5d | 2024-05-02 | 2024-05-09 | 10 | 2024-05-02 | 2024-05-09 | 5d | 0d |  |  | کارگر خط تولید [2000%] | 800h | 145,300,000 | 145,300,000 |
| 12 | 3.5 | اصلاح نواقص تجهیزات |  | 10d | 2024-05-09 | 2024-05-23 | 11 | 2024-05-09 | 2024-05-23 | 10d | 0d |  |  | تجهیزات خط تولید [3000%]; کارگر خط تولید [3000%] | 4800h | 120,435,900,000 | 120,435,900,000 |
| 13 | 3.6 | استفاده از نرم افزار برای نگهداری تعمیرات |  | 5d | 2024-05-03 | 2024-05-09 | 8 | 2024-05-03 | 2024-05-09 | 5d | 113.99d |  |  | تیم نگهداری و تعمیرات [500%]; سیستم کامپیوتری [500%] | 400h | 50,650,000 | 50,650,000 |
| 14 | 3.7 | انجام تست های شیمیایی و فیزیکی بر روی نمونه ها |  | 30d | 2024-04-29 | 2024-06-07 | 8 | 2024-04-29 | 2024-06-07 | 30d | 92.99d |  |  | تیم متخصصین داروسازی [1000%]; مواد اولیه [1000%] | 2400h | 1,840,715,000 | 1,840,715,000 |
| 15 | 3.8 | انجام آزمایش های بالینی بر روی بیماران پروانه ای |  | 30d | 2024-04-29 | 2024-06-07 | 8 | 2024-04-29 | 2024-06-07 | 30d | 17.99d | 0d |  | تیم متخصصین داروسازی [1000%]; مواد اولیه [1000%] | 2400h | 1,840,715,000 | 1,840,715,000 |
| 16 | 3.9 | جمع آوری و تحلیل داده ها |  | 75d | 2024-06-10 | 2024-09-20 | 15 | 2024-06-10 | 2024-09-20 | 75d | 17.99d |  |  | متخصص آماری | 600h | 300,065,000 | 300,065,000 |
| 17 | 4 | **بررسی ویژگی های پانسمان** |  | 25d | 2024-01-22 | 2024-02-23 |  | 2024-01-22 | 2024-02-23 | 25d | 63.2d |  |  |  | 1200h | 293,300,000 | 293,300,000 |
| 18 | 4.1 | بررسی خواص مورد نیاز برای پانسمان |  | 10d | 2024-01-22 | 2024-02-02 | 1 | 2024-01-22 | 2024-02-02 | 10d | 63.2d | 0d |  | تیم متخصصین داروسازی [500%] | 400h | 140,325,000 | 140,325,000 |
| 19 | 4.2 | بررسی مواد موجود در بازار |  | 5d | 2024-02-05 | 2024-02-09 | 18 | 2024-02-05 | 2024-02-09 | 5d | 63.2d | 0d |  | نیروی انسانی تامین مواد اولیه [1000%] | 400h | 76,650,000 | 76,650,000 |
| 20 | 4.3 | انتخاب مواد با کیفیت و قیمت مناسب |  | 10d | 2024-02-12 | 2024-02-23 | 19 | 2024-02-12 | 2024-02-23 | 10d | 63.2d |  |  | نیروی انسانی تامین مواد اولیه [500%] | 400h | 76,325,000 | 76,325,000 |
| 21 | 5 | **تولید پانسمان** |  | 62.79d | 2024-05-23 | 2024-08-19 | 20, 6, 12 | 2024-05-23 | 2024-08-19 | 62.79d | 0d |  |  |  | 12320h | 19,258,370,000 | 19,258,370,000 |
| 22 | 5.1 | اصلاح خط تولید پانسمان با استفاده از منابع انتخاب شده |  | 20d | 2024-05-23 | 2024-06-20 | 20, 6, 12 | 2024-05-23 | 2024-06-20 | 20d | 0d |  |  | تیم مهندسی صنایع [500%]; کارگر خط تولید [1500%]; مواد اولیه [2000%] | 3200h | 2,673,365,000 | 2,673,365,000 |
| 23 | 5.2 | تهییه محلول پلیمری برای تولید الیاف الکتروریسی |  | 10d | 2024-07-22 | 2024-08-02 | 22 | 2024-07-22 | 2024-08-02 | 10d | 5.99d |  |  | تیم متخصصین داروسازی [1000%]; مواد اولیه [2000%] | 800h | 2,280,715,000 | 2,280,715,000 |
| 24 | 5.3 | تهییه محلول سیلیکونی برای تولید فوم های سیلیکونی |  | 15d | 2024-06-20 | 2024-07-11 | 22 | 2024-06-20 | 2024-07-11 | 15d | 22.79d |  |  | تیم متخصصین داروسازی [1000%]; مواد اولیه [2000%] | 1200h | 2,420,715,000 | 2,420,715,000 |
| 25 | 5.4 | تهییه نخ های الاستیک برای تولید بانداژ های کشی |  | 20d | 2024-06-20 | 2024-07-18 | 22 | 2024-06-20 | 2024-07-18 | 20d | 17.79d |  |  | کارگر خط تولید [1000%]; مواد اولیه [2000%] | 1600h | 2,288,715,000 | 2,288,715,000 |
| 26 | 5.5 | انجام روش الکتروریسی برای تولید الیاف الکتروریسی |  | 14d | 2024-07-11 | 2024-08-12 | 22 | 2024-07-11 | 2024-08-12 | 14d | 0d |  |  | تیم متخصصین داروسازی [1000%]; مواد اولیه [2000%] | 1120h | 2,392,715,000 | 2,392,715,000 |
| 27 | 5.6 | انجام روش بافتنی برای تولید بانداژ های کشی |  | 20d | 2024-06-20 | 2024-07-18 | 22 | 2024-06-20 | 2024-07-18 | 20d | 17.79d |  |  | کارگر خط تولید [1000%]; مواد اولیه [2000%] | 1600h | 2,288,715,000 | 2,288,715,000 |
| 28 | 5.7 | انجام روش اسپان باند برای تولید فوم های الکتروریسی |  | 30d | 2024-06-20 | 2024-08-01 | 22 | 2024-06-20 | 2024-08-01 | 30d | 7.79d |  |  | تیم متخصصین داروسازی [1000%]; مواد اولیه [2000%] | 2400h | 2,840,715,000 | 2,840,715,000 |
| 29 | 5.8 | برش و شکل دهی پاسنمان ها بر اساس اندازه مورد نیاز |  | 5d | 2024-08-12 | 2024-08-19 | 27, 22, 23, 24, 25, 26, 28 | 2024-08-12 | 2024-08-19 | 5d | 0d |  |  | کارگر خط تولید [1000%]; مواد اولیه [2000%] | 400h | 2,072,715,000 | 2,072,715,000 |

| ID | WBS | Task | Type | Duration | Start | Finish | Predecessors | Baseline start | Baseline finish | Baseline duration | Total slack | Free slack | Resources | Work | Cost | Baseline cost |
| --- | --- | --- | --- | --- | --- | --- | --- | --- | --- | --- | --- | --- | --- | --- | --- | --- |
| 30 | 6 | **تامین** |  | 15d | 2024-01-22 | 2024-02-09 | 1 | 2024-01-22 | 2024-02-09 | 15d | 177.99d |  |  | 600h | 300,650,000 | 300,650,000 |
| 31 | 6.1 | تخمین،تامین و تخصیص منابع |  | 10d | 2024-01-22 | 2024-02-02 | 1 | 2024-01-22 | 2024-02-02 | 10d | 177.99d | 0d | مدیران و سیاست گذاران [500%] | 400h | 200,325,000 | 200,325,000 |
| 32 | 6.2 | تدوین استراتژی‌ها و سیاست‌های کلان |  | 5d | 2024-02-05 | 2024-02-09 | 31 | 2024-02-05 | 2024-02-09 | 5d | 177.99d |  | مدیران و سیاست گذاران [500%] | 200h | 100,325,000 | 100,325,000 |
| 33 | 7 | **تامین کنندگان** |  | 83.2d | 2024-02-12 | 2024-06-06 | 1 | 2024-02-12 | 2024-06-06 | 83.2d | 94.79d |  |  | 800h | 776,715,000 | 776,715,000 |
| 34 | 7.1 | شناسایی و عقد قرارداد با تأمین‌کنندگان مناسب |  | 10d | 2024-02-12 | 2024-02-23 | 1 | 2024-02-12 | 2024-02-23 | 10d | 167.99d |  | مدیران و سیاست گذاران [500%] | 400h | 200,325,000 | 200,325,000 |
| 35 | 7.2 | شناسایی و تهیه سیستم‌های رایانه‌ای موردنیاز |  | 10d | 2024-05-23 | 2024-06-06 | 12 | 2024-05-23 | 2024-06-06 | 10d | 94.79d |  | مواد اولیه [500%]; نیروی انسانی تامین مواد اولیه [500%] | 400h | 576,390,000 | 576,390,000 |
| 36 | 8 | **مجوزها** |  | 42d | 2024-08-19 | 2024-10-16 | 29 | 2024-08-19 | 2024-10-16 | 42d | 0d |  |  | 1200h | 360,520,000 | 360,520,000 |
| 37 | 8.1 | ارایه محصول تولید شده با خط تولید جدید |  | 12d | 2024-08-19 | 2024-09-04 | 29 | 2024-08-19 | 2024-09-04 | 12d | 0d |  | تیم مهندسی صنایع [500%] | 480h | 144,325,000 | 144,325,000 |
| 38 | 8.2 | اخذ مجوز های لازم |  | 30d | 2024-09-04 | 2024-10-16 | 37 | 2024-09-04 | 2024-10-16 | 30d | 0d |  | کارمند بخش حقوقی [300%] | 720h | 216,195,000 | 216,195,000 |
| 39 | 9 | FINISH | milestone | 0d | 2024-10-16 | 2024-10-16 | 16, 32, 34, 35, 38, 13, 14 | 2024-10-16 | 2024-10-16 | 0d | 0d |  |  |  |  |  |
