# Group9_GantChart

Schedule from MS Project, 2024-01-22 to 2024-09-26, costs in TMN.

## Calendars

- Standard: Mon-Fri 08:00-12:00, 13:00-17:00; Sat-Sun off.

## Resources

| Resource | Group | Rate | Cost per use |
| --- | --- | --- | --- |
| کارگر خط تولید | منابع انسانی | 180000 | 65000 |
| نیروی انسانی تامین مواد اولیه |  | 190000 | 65000 |
| تیم کنترل کیفیت |  | 300000 | 65000 |
| تیم متخصصین داروسازی |  | 350000 | 65000 |
| مدیران و سیاست گذاران |  | 500000 | 65000 |
| تیم نگهداری و تعمیرات |  | 250000 | 65000 |
| تیم مهندسی صنایع |  | 300000 | 65000 |
| کارمند بخش حقوقی |  | 300000 | 65000 |
| متخصص آماری |  | 500000 | 65000 |
| مواد اولیه |  | 100000000 | 65000 |
| تجهیزات خط تولید |  | 50000000 | 65000 |
| سیستم کامپیوتری |  |  | 65000 |
| منبع مالی |  |  |  |

## Schedule

| ID | WBS | Task | Type | Duration | Start | Finish | Predecessors | Total slack | Free slack | Resources | Work | Cost |
| --- | --- | --- | --- | --- | --- | --- | --- | --- | --- | --- | --- | --- |
| 1 | 1 | START | milestone | 0d | 2024-01-22 | 2024-01-22 |  | 0d |  |  |  |  |
| 2 | 2 | **شناسایی مشکلات و نواقص خط تولید** |  | 51d | 2024-01-22 | 2024-04-01 |  | 0d |  |  | 4024h | 1,613,410,000 |
| 3 | 2.1 | بررسی خط تولید |  | 20d | 2024-01-22 | 2024-02-16 | 1 | 0d |  | تیم مهندسی صنایع [1000%] | 1600h | 480,650,000 |
| 4 | 2.2 | کیفیت سنجی خط تولید |  | 20d | 2024-02-19 | 2024-03-15 | 3 | 23d | 0d | تیم کنترل کیفیت [1000%] | 1600h | 480,650,000 |
| 5 | 2.3 | ارایه گزارشات شناسایی مشکلات و نواقص خط تولید |  | 1d | 2024-03-18 | 2024-03-18 | 4 | 23d | 0d | تیم مهندسی صنایع [300%] | 24h | 7,395,000 |
| 6 | 2.4 | رفع مشکلات خط تولید |  | 10d | 2024-03-19 | 2024-04-01 | 5 | 23d |  | کارگر خط تولید [1000%]; مواد اولیه [500%] | 800h | 644,715,000 |
| 7 | 3 | **تعمیر و نگهداری** |  | 55d | 2024-02-19 | 2024-05-03 |  | 0d |  |  | 13128h | 125,044,175,000 |
| 8 | 3.1 | تعمیر و نگهداری تجهیزات خط تولید |  | 10d | 2024-02-19 | 2024-03-01 | 3 | 0d |  | تیم نگهداری و تعمیرات [2000%] | 1600h | 401,300,000 |
| 9 | 3.2 | تعیین زمان های معین برای بررسی تجهیزات |  | 2d | 2024-03-04 | 2024-03-05 | 8 | 0d |  | تیم نگهداری و تعمیرات [300%] | 48h | 12,195,000 |
| 10 | 3.3 | برنامه ریزی برای کیفیت سنجی تجهیزات و ابزار آلات |  | 2d | 2024-03-06 | 2024-03-07 | 9 | 0d |  | تیم نگهداری و تعمیرات [500%] | 80h | 20,325,000 |
| 11 | 3.4 | بررسی نواقص تجهیزات |  | 10d | 2024-03-08 | 2024-03-21 | 10 | 0d |  | کارگر خط تولید [1000%] | 800h | 144,650,000 |
| 12 | 3.5 | اصلاح نواقص تجهیزات |  | 30d | 2024-03-22 | 2024-05-02 | 11 | 0d |  | تجهیزات خط تولید [1000%]; کارگر خط تولید [1000%] | 4800h | 120,433,300,000 |
| 13 | 3.6 | استفاده از نرم افزار برای نگهداری تعمیرات |  | 5d | 2024-03-04 | 2024-03-08 | 8 | 144d |  | تیم نگهداری و تعمیرات [500%]; سیستم کامپیوتری [500%] | 400h | 50,650,000 |
| 14 | 3.7 | انجام تست های شیمیایی و فیزیکی بر روی نمونه ها |  | 30d | 2024-03-04 | 2024-04-12 | 8 | 119d |  | تیم متخصصین داروسازی [1000%]; مواد اولیه [1000%] | 2400h | 1,840,715,000 |
| 15 | 3.8 | انجام آزمایش های بالینی بر روی بیماران پروانه ای |  | 30d | 2024-03-04 | 2024-04-12 | 8 | 104d | 0d | تیم متخصصین داروسازی [1000%]; مواد اولیه [1000%] | 2400h | 1,840,715,000 |
| 16 | 3.9 | جمع آوری و تحلیل داده ها |  | 15d | 2024-04-15 | 2024-05-03 | 15 | 104d |  | متخصص آماری [500%] | 600h | 300,325,000 |
| 17 | 4 | **بررسی ویژگی های پانسمان** |  | 25d | 2024-01-22 | 2024-02-23 |  | 49d |  |  | 1200h | 293,300,000 |
| 18 | 4.1 | بررسی خواص مورد نیاز برای پانسمان |  | 10d | 2024-01-22 | 2024-02-02 | 1 | 49d | 0d | تیم متخصصین داروسازی [500%] | 400h | 140,325,000 |
| 19 | 4.2 | بررسی مواد موجود در بازار |  | 5d | 2024-02-05 | 2024-02-09 | 18 | 49d | 0d | نیروی انسانی تامین مواد اولیه [1000%] | 400h | 76,650,000 |
| 20 | 4.3 | انتخاب مواد با کیفیت و قیمت مناسب |  | 10d | 2024-02-12 | 2024-02-23 | 19 | 49d |  | نیروی انسانی تامین مواد اولیه [500%] | 400h | 76,325,000 |
| 21 | 5 | **تولید پانسمان** |  | 55d | 2024-05-03 | 2024-07-18 | 20, 6, 12 | 0d |  |  | 12320h | 19,258,370,000 |
| 22 | 5.1 | اصلاح خط تولید پانسمان با استفاده از منابع انتخاب شده |  | 20d | 2024-05-03 | 2024-05-30 | 20, 6, 12 | 0d |  | تیم مهندسی صنایع [500%]; کارگر خط تولید [1500%]; مواد اولیه [2000%] | 3200h | 2,673,365,000 |
| 23 | 5.2 | تهییه محلول پلیمری برای تولید الیاف الکتروریسی |  | 10d | 2024-05-31 | 2024-06-13 | 22 | 20d |  | تیم متخصصین داروسازی [1000%]; مواد اولیه [2000%] | 800h | 2,280,715,000 |
| 24 | 5.3 | تهییه محلول سیلیکونی برای تولید فوم های سیلیکونی |  | 15d | 2024-05-31 | 2024-06-20 | 22 | 15d |  | تیم متخصصین داروسازی [1000%]; مواد اولیه [2000%] | 1200h | 2,420,715,000 |
| 25 | 5.4 | تهییه نخ های الاستیک برای تولید بانداژ های کشی |  | 20d | 2024-05-31 | 2024-06-27 | 22 | 10d |  | کارگر خط تولید [1000%]; مواد اولیه [2000%] | 1600h | 2,288,715,000 |
| 26 | 5.5 | انجام روش الکتروریسی برای تولید الیاف الکتروریسی |  | 14d | 2024-05-31 | 2024-06-19 | 22 | 16d |  | تیم متخصصین داروسازی [1000%]; مواد اولیه [2000%] | 1120h | 2,392,715,000 |
| 27 | 5.6 | انجام روش بافتنی برای تولید بانداژ های کشی |  | 20d | 2024-05-31 | 2024-06-27 | 22 | 10d |  | کارگر خط تولید [1000%]; مواد اولیه [2000%] | 1600h | 2,288,715,000 |
| 28 | 5.7 | انجام روش اسپان باند برای تولید فوم های الکتروریسی |  | 30d | 2024-05-31 | 2024-07-11 | 22 | 0d |  | تیم متخصصین داروسازی [1000%]; مواد اولیه [2000%] | 2400h | 2,840,715,000 |
| 29 | 5.8 | برش و شکل دهی پاسنمان ها بر اساس اندازه مورد نیاز |  | 5d | 2024-07-12 | 2024-07-18 | 27, 22, 23, 24, 25, 26, 28 | 0d |  | کارگر خط تولید [1000%]; مواد اولیه [2000%] | 400h | 2,072,715,000 |

| ID | WBS | Task | Type | Duration | Start | Finish | Predecessors | Total slack | Free slack | Resources | Work | Cost |
| --- | --- | --- | --- | --- | --- | --- | --- | --- | --- | --- | --- | --- |
| 30 | 6 | **تامین** |  | 15d | 2024-01-22 | 2024-02-09 | 1 | 164d |  |  | 600h | 300,650,000 |
| 31 | 6.1 | تخمین،تامین و تخصیص منابع |  | 10d | 2024-01-22 | 2024-02-02 | 1 | 164d | 0d | مدیران و سیاست گذاران [500%] | 400h | 200,325,000 |
| 32 | 6.2 | تدوین استراتژی‌ها و سیاست‌های کلان |  | 5d | 2024-02-05 | 2024-02-09 | 31 | 164d |  | مدیران و سیاست گذاران [500%] | 200h | 100,325,000 |
| 33 | 7 | **تامین کنندگان** |  | 84d | 2024-01-22 | 2024-05-16 | 1 | 95d |  |  | 800h | 776,715,000 |
| 34 | 7.1 | شناسایی و عقد قرارداد با تأمین‌کنندگان مناسب |  | 10d | 2024-01-22 | 2024-02-02 | 1 | 169d |  | مدیران و سیاست گذاران [500%] | 400h | 200,325,000 |
| 35 | 7.2 | شناسایی و تهیه سیستم‌های رایانه‌ای موردنیاز |  | 10d | 2024-05-03 | 2024-05-16 | 12 | 95d |  | مواد اولیه [500%]; نیروی انسانی تامین مواد اولیه [500%] | 400h | 576,390,000 |
| 36 | 8 | **مجوزها** |  | 50d | 2024-07-19 | 2024-09-26 | 29 | 0d |  |  | 1200h | 360,390,000 |
| 37 | 8.1 | ارایه محصول تولید شده با خط تولید جدید |  | 20d | 2024-07-19 | 2024-08-15 | 29 | 0d |  | تیم مهندسی صنایع [300%] | 480h | 144,195,000 |
| 38 | 8.2 | اخذ مجوز های لازم |  | 30d | 2024-08-16 | 2024-09-26 | 37 | 0d |  | کارمند بخش حقوقی [300%] | 720h | 216,195,000 |
| 39 | 9 | FINISH | milestone | 0d | 2024-09-26 | 2024-09-26 | 16, 32, 34, 35, 38 | 0d |  |  |  |  |
